# SD17-V1研发计划

Schedule from a web Gantt chart, 2025-06-09 to 2025-07-29.
Saturdays and Sundays are off

## Schedule

| ID | WBS | Task | Duration | Start | Finish | Predecessors | Status |
| --- | --- | --- | --- | --- | --- | --- | --- |
| 2 | 1 | **结构设计** | 37d | 2025-06-09 | 2025-07-29 |  |  |
| 3 | 1.1 | ID+结构堆叠 | 16d | 2025-06-09 | 2025-06-30 |  |  |
| 4 | 1.2 | 结构评审和修改 | 5d | 2025-07-01 | 2025-07-07 | 3 | waiting |
| 5 | 1.3 | 第一阶段结构细化评审 | 5d | 2025-07-08 | 2025-07-14 | 4 | waiting |
| 6 | 1.4 | 供应商预选 | 5d | 2025-07-15 | 2025-07-21 | 5 | waiting |
| 7 | 1.5 | 第二阶段结构细化和评审 | 6d | 2025-07-22 | 2025-07-29 | 6 | waiting |
| 8 | 1.6 | **DFM修改和评审** | 29d | 2025-06-09 | 2025-07-17 |  |  |
| 9 | 1.6.1 | 供应商输出DFM | 14d | 2025-06-09 | 2025-06-26 |  |  |
| 10 | 1.6.2 | DFM评审 | 4d | 2025-06-27 | 2025-07-02 | 9 | waiting |
| 11 | 1.6.3 | DFM修改确认 | 3d | 2025-07-03 | 2025-07-07 | 10 | waiting |
| 12 | 1.6.4 | 正式T0投模 | 8d | 2025-07-08 | 2025-07-17 | 11 | waiting |
| 13 | 1.7 | 结构修模 | 16d | 2025-06-09 | 2025-06-30 |  | waiting |
| 14 | 2 | **硬件设计** | 1d | 2025-06-09 | 2025-06-09 |  |  |
| 15 | 2.1 | 硬件原理图设计完成 | 1d | 2025-06-09 | 2025-06-09 |  |  |
| 16 | 2.2 | 硬件layout | 1d | 2025-06-09 | 2025-06-09 |  |  |
| 17 | 2.3 | 投PCB板+确认数量并回板 | 1d | 2025-06-09 | 2025-06-09 |  |  |
| 18 | 2.4 | 回PCBA板 | 1d | 2025-06-09 | 2025-06-09 |  |  |
| 19 | 2.5 | 硬件裸板调试 | 1d | 2025-06-09 | 2025-06-09 |  |  |
| 20 | 2.6 | 硬件单元测试完成 | 1d | 2025-06-09 | 2025-06-09 |  |  |
| 21 | 3 | **软件开发** | 1d | 2025-06-09 | 2025-06-09 |  |  |
| 22 | 3.1 | 裸板调试版本 | 1d | 2025-06-09 | 2025-06-09 |  |  |
| 23 | 3.2 | 单元测试版本 | 1d | 2025-06-09 | 2025-06-09 |  |  |
| 24 | 3.3 | 工厂自测版本完成 | 1d | 2025-06-09 | 2025-06-09 |  |  |
| 26 | 3.4 | 工厂版本转测版本完成 | 1d | 2025-06-09 | 2025-06-09 |  |  |
| 27 | 3.5 | 正式版本转测版本完成 | 1d | 2025-06-09 | 2025-06-09 |  |  |
